# 东科 Vth -1V

Schedule from a web Gantt chart, 2025-09-29 to 2026-01-14.
Saturdays and Sundays are off

## Schedule

| ID | WBS | Task | Duration | Start | Finish | Predecessors | Complete | Status |
| --- | --- | --- | --- | --- | --- | --- | --- | --- |
| 2 | 1 | **1st Learning Cycle** | 33d | 2025-09-29 | 2025-11-12 |  | 3% |  |
| 3 | 1.1 | kick-off | 1d | 2025-09-29 | 2025-09-29 |  | 100% |  |
| 4 | 1.2 | 项目立项会议 | 1d | 2025-09-29 | 2025-09-29 |  |  |  |
| 5 | 1.3 | 1st LC lot W/S | 30d | 2025-09-29 | 2025-11-07 |  |  |  |
| 6 | 1.4 | 1st LC lot F/O | 3d | 2025-11-10 | 2025-11-12 | 5 |  | waiting |
| 7 | 2 | 1st LC lot samples | 45d | 2025-11-13 | 2026-01-14 | 6 |  | waiting |
| 8 | 3 | RE | 1d | 2025-09-29 | 2025-09-29 |  |  |  |
